How a schedule from MS Project changed from version to version. A marks actual dates.

## Version 1 (saved 2022-09-03, file Проект1045.mpp)

Note of the change: обновление

| ID | Task | Duration | Start | Finish | Total float |
| --- | --- | --- | --- | --- | --- |
| 1 | Разработка ПО | 1d? | 2008-09-01 | 2008-09-01 | 0d |
| 2 | Постановка задачи | 1d? | 2008-09-01 | 2008-09-01 | 0d |
| 3 | Определение требований к ПО | 1d? | 2008-09-01 | 2008-09-01 | 0d |
| 4 | Определение функциональных требований | 1d? | 2008-09-01 | 2008-09-01 | 0d |
| 5 | Определение эксплуатационных требований | 1d? | 2008-09-01 | 2008-09-01 | 0d |
| 6 | Предпроектные исследования | 1d? | 2008-09-01 | 2008-09-01 | 0d |
| 7 | Разработка и утверждение технического | 1d? | 2008-09-01 | 2008-09-01 | 0d |
| 8 | Анализ требований и определение спецификации | 1d? | 2008-09-01 | 2008-09-01 | 0d |
| 9 | Анализ требований технического задания | 1d? | 2008-09-01 | 2008-09-01 | 0d |
| 10 | Выбор математического аппарата формализации | 1d? | 2008-09-01 | 2008-09-01 | 0d |
| 11 | Разработка модели предметной области | 1d? | 2008-09-01 | 2008-09-01 | 0d |
| 12 | Согласование и утверждение эскизного проекта | 1d? | 2008-09-01 | 2008-09-01 | 0d |
| 13 | Проектирование | 1d? | 2008-09-01 | 2008-09-01 | 0d |
| 14 | Проектирование общей структуры ПО | 1d? | 2008-09-01 | 2008-09-01 | 0d |
| 15 | Декомпозиция компонентов и построение структурных иерархий | 1d? | 2008-09-01 | 2008-09-01 | 0d |
| 16 | Проектирование компонентов | 1d? | 2008-09-01 | 2008-09-01 | 0d |
| 17 | Согласование и утверждение технического проекта | 1d? | 2008-09-01 | 2008-09-01 | 0d |
| 18 | Реализация | 1d? | 2008-09-01 | 2008-09-01 | 0d |
| 19 | Разработка программы | 1d? | 2008-09-01 | 2008-09-01 | 0d |
| 20 | Разработка программной документации | 1d? | 2008-09-01 | 2008-09-01 | 0d |
| 21 | Испытание программы | 1d? | 2008-09-01 | 2008-09-01 | 0d |
| 22 | Разработка методики тестирования | 1d? | 2008-09-01 | 2008-09-01 | 0d |
| 23 | Тестирование модулей | 1d? | 2008-09-01 | 2008-09-01 | 0d |
| 24 | Тестирование интеграции | 1d? | 2008-09-01 | 2008-09-01 | 0d |
| 25 | Согласование и утверждение рабочего проекта | 1d? | 2008-09-01 | 2008-09-01 | 0d |
| 26 | Внедрение | 1d? | 2008-09-01 | 2008-09-01 | 0d |
| 27 | Подготовка и передача ПО и программной документации для сопровождения | 1d? | 2008-09-01 | 2008-09-01 | 0d |
| 28 | Оформление и утверждение акта о передаче программы | 1d? | 2008-09-01 | 2008-09-01 | 0d |
| 29 | Обучение персонала | 1d? | 2008-09-01 | 2008-09-01 | 0d |

## Version 2 (saved 2022-10-01, file Проект1045.mpp)

Note of the change: Merge branch 'main' of https://github.com/R3nnyWeb/labs5

Last finish 2008-09-01 → 2009-01-26 (+147d).

Added:

| ID | Task | Duration | Start | Finish | Predecessors |
| --- | --- | --- | --- | --- | --- |
| 30 | Завершение проекта | 0d | 2009-01-26 | 2009-01-26 | 29 |

Changed:

| ID | Task | Start | Finish | Duration | Total float | Predecessors | Other |
| --- | --- | --- | --- | --- | --- | --- | --- |
| 1 | **Разработка ПО** |  | 2008-09-01 → 2009-01-26 (+147d) | 1d? → 105d |  |  |  |
| 2 | **Постановка задачи** |  | 2008-09-01 → 2008-09-16 (+15d) | 1d? → 12d |  |  |  |
| 3 | **Определение требований к ПО** |  | 2008-09-01 → 2008-09-08 (+7d) | 1d? → 6d |  |  |  |
| 4 | Определение функциональных требований |  | 2008-09-01 → 2008-09-08 (+7d) | 1d? → 6d |  |  | resources none → Руководитель проекта [50%]; Аналитик [50%] |
| 5 | Определение эксплуатационных требований | 2008-09-01 → 2008-09-02 (+1d) | 2008-09-01 → 2008-09-08 (+7d) | 1d? → 4d |  | none → 4FF | resources none → Руководитель проекта [50%]; Аналитик [50%] |
| 6 | Предпроектные исследования | 2008-09-01 → 2008-09-08 (+7d) | 2008-09-01 → 2008-09-15 (+14d) | 1d? → 5d |  | none → 5 | resources none → Аналитик; Программист-аналитик |
| 7 | Разработка и утверждение технического | 2008-09-01 → 2008-09-15 (+14d) | 2008-09-01 → 2008-09-16 (+15d) | 1d? → 2d |  | none → 6SS+4d | resources none → Руководитель проекта; Специалист по документации |
| 8 | **Анализ требований и определение спецификации** | 2008-09-01 → 2008-09-16 (+15d) | 2008-09-01 → 2008-09-29 (+28d) | 1d? → 8.94d |  |  |  |
| 9 | Анализ требований технического задания | 2008-09-01 → 2008-09-16 (+15d) | 2008-09-01 → 2008-09-29 (+28d) | 1d? → 3.94d | 0d → 84.06d | none → 7 | resources none → Руководитель проекта [50%]; Аналитик |
| 10 | Выбор математического аппарата формализации | 2008-09-01 → 2008-09-16 (+15d) | 2008-09-01 → 2008-09-19 (+18d) | 1d? → 3d |  | none → 7 | resources none → Аналитик; Программист-аналитик [50%] |
| 11 | Разработка модели предметной области | 2008-09-01 → 2008-09-22 (+21d) | 2008-09-01 → 2008-09-25 (+24d) | 1d? → 4d |  | none → 10 | resources none → Аналитик [25%]; Программист-аналитик [50%] |
| 12 | Согласование и утверждение эскизного проекта | 2008-09-01 → 2008-09-23 (+22d) | 2008-09-01 → 2008-09-25 (+24d) | 1d? → 2d |  | none → 11FF | resources none → Аналитик [25%]; Программист-аналитик [50%] |
| 13 | **Проектирование** | 2008-09-01 → 2008-09-25 (+24d) | 2008-09-01 → 2008-10-20 (+49d) | 1d? → 17d |  |  | resources none → Младший программист |
| 14 | Проектирование общей структуры ПО | 2008-09-01 → 2008-09-25 (+24d) | 2008-09-01 → 2008-10-02 (+31d) | 1d? → 5d |  | none → 12 | resources none → Старший программист [50%]; Программист [50%] |
| 15 | Декомпозиция компонентов и построение структурных иерархий | 2008-09-01 → 2008-10-02 (+31d) | 2008-09-01 → 2008-10-20 (+49d) | 1d? → 6.94d | 0d → 69.06d | none → 14 | resources none → Старший программист; Программист [50%] |
| 16 | Проектирование компонентов | 2008-09-01 → 2008-10-07 (+36d) | 2008-09-01 → 2008-10-16 (+45d) | 1d? → 7d |  | none → 14FS+3d | resources none → Программист |
| 17 | Согласование и утверждение технического проекта | 2008-09-01 → 2008-10-15 (+44d) | 2008-09-01 → 2008-10-20 (+49d) | 1d? → 3d |  | none → 16SS+6d | resources none → Руководитель проекта [50%]; Старший программист [50%]; Специалист по документации |
| 18 | **Реализация** | 2008-09-01 → 2008-10-20 (+49d) | 2008-09-01 → 2009-01-15 (+136d) | 1d? → 62d |  |  | resources none → Представитель заказчика |
| 19 | Разработка программы | 2008-09-01 → 2008-10-20 (+49d) | 2008-09-01 → 2008-12-01 (+91d) | 1d? → 30d |  | none → 17 | resources none → Программист; Старший программист [50%] |
| 20 | Разработка программной документации | 2008-09-01 → 2008-12-01 (+91d) | 2008-09-01 → 2008-12-15 (+105d) | 1d? → 10d |  | none → 19FF | resources none → Программист; Специалист по документации [50%] |
| 21 | **Испытание программы** | 2008-09-01 → 2008-12-15 (+105d) | 2008-09-01 → 2009-01-15 (+136d) | 1d? → 22d |  |  |  |
| 22 | Разработка методики тестирования | 2008-09-01 → 2008-12-15 (+105d) | 2008-09-01 → 2008-12-17 (+107d) | 1d? → 2d |  | none → 20 | resources none → Специалист по испытаниям; Программист [50%] |
| 23 | Тестирование модулей | 2008-09-01 → 2008-12-17 (+107d) | 2008-09-01 → 2009-01-15 (+136d) | 1d? → 15d | 0d → 7d | none → 22 | resources none → Специалист по испытаниям; Программист [50%] |
| 24 | Тестирование интеграции | 2008-09-01 → 2008-12-24 (+114d) | 2008-09-01 → 2009-01-08 (+129d) | 1d? → 10d |  | none → 22FS+5d | resources none → Специалист по испытаниям; Программист [50%] |
| 25 | Согласование и утверждение рабочего проекта | 2008-09-01 → 2009-01-07 (+128d) | 2008-09-01 → 2009-01-14 (+135d) | 1d? → 5d |  | none → 24FS-1d | resources none → Руководитель проекта [50%]; Старший программист [50%]; Специалист по документации |
| 26 | **Внедрение** | 2008-09-01 → 2009-01-14 (+135d) | 2008-09-01 → 2009-01-26 (+147d) | 1d? → 8d |  |  |  |
| 27 | Подготовка и передача ПО и программной документации для сопровождения | 2008-09-01 → 2009-01-14 (+135d) | 2008-09-01 → 2009-01-19 (+140d) | 1d? → 3d |  | none → 25 | resources none → Руководитель проекта [50%]; Программист [50%]; Специалист по документации |
| 28 | Оформление и утверждение акта о передаче программы | 2008-09-01 → 2009-01-20 (+141d) | 2008-09-01 → 2009-01-21 (+142d) | 1d? → 2d | 0d → 3d | none → 27FF | resources none → Руководитель проекта; Специалист по документации |
| 29 | Обучение персонала | 2008-09-01 → 2009-01-20 (+141d) | 2008-09-01 → 2009-01-26 (+147d) | 1d? → 5d |  | none → 27 | resources none → Программист |

## Version 3 (saved 2022-10-15, file Проект1045.mpp)

Note of the change: m

Last finish 2009-01-26 → 2009-02-09 (+14d). Complete tasks 0 → 6.

Changed:

| ID | Task | Start | Finish | Duration | Complete | Total float | Other |
| --- | --- | --- | --- | --- | --- | --- | --- |
| 1 | **Разработка ПО** | 2008-09-01 A | 2009-01-26 → 2009-02-09 (+14d) | 105d → 115d | 0% → 20% |  | baseline start none → 2008-09-01; baseline finish none → 2009-01-26 |
| 2 | **Постановка задачи** | 2008-09-01 A | 2008-09-16 → 2008-09-17 A (+1d) | 12d → 13d | 0% → 100% | 0d → none | baseline start none → 2008-09-01; baseline finish none → 2008-09-16 |
| 3 | **Определение требований к ПО** | 2008-09-01 A | 2008-09-08 → 2008-09-04 A (-4d) | 6d → 4d | 0% → 100% | 0d → none | baseline start none → 2008-09-01; baseline finish none → 2008-09-08 |
| 4 | Определение функциональных требований | 2008-09-01 A | 2008-09-08 → 2008-09-03 A (-5d) | 6d → 3d | 0% → 100% | 0d → none | baseline start none → 2008-09-01; baseline finish none → 2008-09-08 |
| 5 | Определение эксплуатационных требований | 2008-09-02 A | 2008-09-08 → 2008-09-04 A (-4d) | 4d → 2d | 0% → 100% | 0d → none | baseline start none → 2008-09-02; baseline finish none → 2008-09-08 |
| 6 | Предпроектные исследования | 2008-09-08 → 2008-09-04 A (-4d) | 2008-09-15 → 2008-09-11 A (-4d) |  | 0% → 100% | 0d → none | baseline start none → 2008-09-08; baseline finish none → 2008-09-15 |
| 7 | Разработка и утверждение технического | 2008-09-15 → 2008-09-10 A (-5d) | 2008-09-16 → 2008-09-17 A (+1d) | 2d → 5d | 0% → 100% | 0d → none | baseline start none → 2008-09-15; baseline finish none → 2008-09-16 |
| 8 | **Анализ требований и определение спецификации** | 2008-09-16 → 2008-09-17 A (+1d) | 2008-09-29 → 2008-10-09 (+10d) | 8.94d → 16d | 0% → 59% | 0d → 86d | baseline start none → 2008-09-16; baseline finish none → 2008-09-29 |
| 9 | Анализ требований технического задания | 2008-09-16 → 2008-09-17 A (+1d) | 2008-09-29 → 2008-09-26 (-3d) | 3.94d → 4d | 0% → 50% | 84.06d → 95d | baseline start none → 2008-09-16; baseline finish none → 2008-09-29 |
| 10 | Выбор математического аппарата формализации | 2008-09-16 → 2008-09-17 A (+1d) | 2008-09-19 → 2008-10-03 (+14d) | 3d → 12d | 0% → 42% | 0d → 90d | baseline start none → 2008-09-16; baseline finish none → 2008-09-19 |
| 11 | Разработка модели предметной области | 2008-09-22 → 2008-10-06 A (+14d) | 2008-09-25 → 2008-10-09 A (+14d) |  | 0% → 100% | 0d → none | baseline start none → 2008-09-22; baseline finish none → 2008-09-25 |
| 12 | Согласование и утверждение эскизного проекта | 2008-09-23 → 2008-10-07 A (+14d) | 2008-09-25 → 2008-10-09 A (+14d) |  | 0% → 100% | 0d → none | baseline start none → 2008-09-23; baseline finish none → 2008-09-25 |
| 13 | **Проектирование** | 2008-09-25 → 2008-10-09 (+14d) | 2008-10-20 → 2008-11-03 (+14d) |  |  |  | baseline start none → 2008-09-25; baseline finish none → 2008-10-20 |
| 14 | Проектирование общей структуры ПО | 2008-09-25 → 2008-10-09 (+14d) | 2008-10-02 → 2008-10-16 (+14d) |  |  |  | baseline start none → 2008-09-25; baseline finish none → 2008-10-02 |
| 15 | Декомпозиция компонентов и построение структурных иерархий | 2008-10-02 → 2008-10-16 (+14d) | 2008-10-20 → 2008-11-03 (+14d) |  |  |  | baseline start none → 2008-10-02; baseline finish none → 2008-10-20 |
| 16 | Проектирование компонентов | 2008-10-07 → 2008-10-21 (+14d) | 2008-10-16 → 2008-10-30 (+14d) |  |  |  | baseline start none → 2008-10-07; baseline finish none → 2008-10-16 |
| 17 | Согласование и утверждение технического проекта | 2008-10-15 → 2008-10-29 (+14d) | 2008-10-20 → 2008-11-03 (+14d) |  |  |  | baseline start none → 2008-10-15; baseline finish none → 2008-10-20 |
| 18 | **Реализация** | 2008-10-20 → 2008-11-03 (+14d) | 2009-01-15 → 2009-01-29 (+14d) |  |  |  | baseline start none → 2008-10-20; baseline finish none → 2009-01-15 |
| 19 | Разработка программы | 2008-10-20 → 2008-11-03 (+14d) | 2008-12-01 → 2008-12-15 (+14d) |  |  |  | baseline start none → 2008-10-20; baseline finish none → 2008-12-01 |
| 20 | Разработка программной документации | 2008-12-01 → 2008-12-15 (+14d) | 2008-12-15 → 2008-12-29 (+14d) |  |  |  | baseline start none → 2008-12-01; baseline finish none → 2008-12-15 |
| 21 | **Испытание программы** | 2008-12-15 → 2008-12-29 (+14d) | 2009-01-15 → 2009-01-29 (+14d) |  |  |  | baseline start none → 2008-12-15; baseline finish none → 2009-01-15 |
| 22 | Разработка методики тестирования | 2008-12-15 → 2008-12-29 (+14d) | 2008-12-17 → 2008-12-31 (+14d) |  |  |  | baseline start none → 2008-12-15; baseline finish none → 2008-12-17 |
| 23 | Тестирование модулей | 2008-12-17 → 2008-12-31 (+14d) | 2009-01-15 → 2009-01-29 (+14d) |  |  |  | baseline start none → 2008-12-17; baseline finish none → 2009-01-15 |
| 24 | Тестирование интеграции | 2008-12-24 → 2009-01-08 (+15d) | 2009-01-08 → 2009-01-22 (+14d) |  |  |  | baseline start none → 2008-12-24; baseline finish none → 2009-01-08 |
| 25 | Согласование и утверждение рабочего проекта | 2009-01-07 → 2009-01-21 (+14d) | 2009-01-14 → 2009-01-28 (+14d) |  |  |  | baseline start none → 2009-01-07; baseline finish none → 2009-01-14 |
| 26 | **Внедрение** | 2009-01-14 → 2009-01-28 (+14d) | 2009-01-26 → 2009-02-09 (+14d) |  |  |  | baseline start none → 2009-01-14; baseline finish none → 2009-01-26 |
| 27 | Подготовка и передача ПО и программной документации для сопровождения | 2009-01-14 → 2009-01-28 (+14d) | 2009-01-19 → 2009-02-02 (+14d) |  |  |  | baseline start none → 2009-01-14; baseline finish none → 2009-01-19 |
| 28 | Оформление и утверждение акта о передаче программы | 2009-01-20 → 2009-02-03 (+14d) | 2009-01-21 → 2009-02-04 (+14d) |  |  |  | baseline start none → 2009-01-20; baseline finish none → 2009-01-21 |
| 29 | Обучение персонала | 2009-01-20 → 2009-02-03 (+14d) | 2009-01-26 → 2009-02-09 (+14d) |  |  |  | baseline start none → 2009-01-20; baseline finish none → 2009-01-26 |
| 30 | Завершение проекта | 2009-01-26 → 2009-02-09 (+14d) | 2009-01-26 → 2009-02-09 (+14d) |  |  |  | baseline start none → 2009-01-26; baseline finish none → 2009-01-26 |
